# Stargazer

Schedule from MS Project, 2010-01-06 to 2010-04-07, 4 hours a day, A marks actual dates.
Okanagan College

## Calendars

- Standard: Mon 14:00-16:30; Tue off; Wed 14:30-16:30; Thu 14:30-18:30; Fri-Sun off. Exceptions (off unless hours are given): 2010-04-06 08:00-12:00, 13:00-17:00.

## Resources

| Resource |
| --- |
| Robert |
| Rob |

## Schedule

| ID | WBS | Task | Type | Duration | Start | Finish | Predecessors | Complete | Remaining | Total slack | Free slack | Constraint | Resources | Work | Actual work | Text1 |
| --- | --- | --- | --- | --- | --- | --- | --- | --- | --- | --- | --- | --- | --- | --- | --- | --- |
| 1 | 1 | **Iteration 5: Release #4: Automated Scheduling and Telescope Positioning** |  | 9d | 2010-01-06 14:30 A | 2010-02-04 08:00 A |  | 100% |  |  |  |  |  | 30.75h | 30.75h | 16 |
| 2 | 1.1 | **Web system** |  | 4.62d | 2010-01-06 14:30 A | 2010-01-20 16:00 A |  | 100% |  |  |  |  |  | 14.25h | 14.25h | 16 |
| 3 | 1.1.1 | Add new online help documentation to website |  | 3h | 2010-01-11 14:00 A | 2010-01-13 15:00 A |  | 100% |  |  |  | start no earlier than 2010-01-11 08:00 | Robert | 3h | 3h | 12 |
| 4 | 1.1.2 | Fix CSS with mobile devices |  | 15min | 2010-01-07 14:30 A | 2010-01-07 14:45 A |  | 100% |  |  |  | start no earlier than 2010-01-07 08:00 | Rob | 0.25h | 0.25h |  |
| 5 | 1.1.3 | Minor refactoring |  | 1.5h | 2010-01-07 14:30 A | 2010-01-07 16:00 A |  | 100% |  |  |  | start no earlier than 2010-01-07 08:00 | Rob | 1.5h | 1.5h |  |
| 6 | 1.1.4 | Research Rails plugin to handle scheduling |  | 2h | 2010-01-11 14:00 A | 2010-01-11 16:00 A |  | 100% |  |  |  | start no earlier than 2010-01-11 08:00 | Rob | 2h | 2h |  |
| 7 | 1.1.5 | Download and install Oracle 10g XE on telescope server |  | 1.5h | 2010-01-14 14:30 A | 2010-01-14 16:00 A | 6 | 100% |  |  |  | start no earlier than 2010-01-14 08:00 | Rob | 1.5h | 1.5h |  |
| 8 | 1.1.6 | Install Oracle client on web server |  | 1h | 2010-01-06 14:30 A | 2010-01-06 15:30 A |  | 100% |  |  |  |  | Rob | 1h | 1h |  |
| 9 | 1.1.7 | Configure Rails environment to now use the Oracle 10g XE database |  | 1h | 2010-01-14 16:00 A | 2010-01-14 17:00 A | 7 | 100% |  |  |  | start no earlier than 2010-01-14 08:00 | Rob | 1h | 1h |  |
| 10 | 1.1.8 | Create triggers/batch file to run application |  | 2h | 2010-01-18 16:00 A | 2010-01-20 16:00 A | 11 | 100% |  |  |  |  | Rob | 2h | 2h |  |
| 11 | 1.1.9 | Test connections and scheduling jobs |  | 2h | 2010-01-18 14:00 A | 2010-01-18 16:00 A | 9 | 100% |  |  |  | start no earlier than 2010-01-18 08:00 | Rob | 2h | 2h |  |
| 12 | 1.2 | **Telescope-controlling application** |  | 3.38d | 2010-01-06 14:30 A | 2010-01-14 17:30 A |  | 100% |  |  |  |  |  | 5h | 5h | 16 |
| 13 | 1.2.1 | Allow for parking the telescope |  | 1h | 2010-01-14 14:30 A | 2010-01-14 15:30 A |  | 100% |  |  |  | start no earlier than 2010-01-14 08:00 | Robert | 1h | 1h |  |
| 14 | 1.2.2 | Allow for telescope movement ability from entered celestial coordinates |  | 2h | 2010-01-14 15:30 A | 2010-01-14 17:30 A | 13 | 100% |  |  |  | start no earlier than 2010-01-14 08:00 | Robert | 2h | 2h |  |
| 15 | 1.2.3 | Test driver for all commands |  | 2h | 2010-01-06 14:30 A | 2010-01-06 16:30 A |  | 100% |  |  |  |  | Robert | 2h | 2h |  |
| 16 | 1.3 | **Documentation** |  | 1.25d | 2010-01-06 14:30 A | 2010-01-07 17:30 A |  | 100% |  |  |  |  |  | 11.5h | 11.5h | 16 |
| 17 | 1.3.1 | Documentation updates |  | 5h | 2010-01-06 14:30 A | 2010-01-07 17:30 A |  | 100% |  |  |  |  | Rob; Robert | 10h | 10h | 20 |
| 18 | 1.3.2 | Metrics gathering |  | 1.5h | 2010-01-06 14:30 A | 2010-01-06 16:00 A |  | 100% |  |  |  |  | Rob | 1.5h | 1.5h |  |
| 19 | 1.4 | Release #4: Automated Scheduling and Telescope Positioning | milestone | 0d | 2010-02-04 08:00 A | 2010-02-04 08:00 A | 2, 12, 16 | 100% |  |  |  | start no earlier than 2010-02-04 08:00 | Rob; Robert |  |  |  |
| 21 | 2 | **Iteration 6: Release #5: Libraries and GUI Enhancements** |  | 7.38d | 2010-02-04 08:00 A | 2010-03-01 08:00 | 1 | 33% | 4.96d | 2.12d | 0d |  |  | 77.75h | 24.25h | 16 |
| 22 | 2.1 | **Web system** |  | 7.38d | 2010-02-04 14:30 A | 2010-03-01 08:00 |  | 78% | 1.59d | 2.12d | 0d |  |  | 29.25h | 24.25h | 16 |
| 23 | 2.1.1 | Integrate libraries (which have celestial objects of interest) to web site |  | 6h | 2010-02-04 14:30 A | 2010-02-08 16:00 A |  | 100% |  |  |  |  | Robert; Rob | 12h | 12h | 24 |
| 24 | 2.1.2 | Add scheduled job for parking telescope |  | 5h | 2010-02-22 16:00 | 2010-02-25 17:00 | 23, 13 |  |  | 2.5d | 0.38d | finish no earlier than 2010-02-25 17:00 | Rob | 5h |  | 20 |
| 25 | 2.1.3 | Telescope parking completed | milestone | 0d | 2010-03-01 08:00 | 2010-03-01 08:00 | 24 |  |  | 2.12d |  | start no earlier than 2010-03-01 08:00 | Rob; Robert |  |  |  |
| 26 | 2.1.4 | Add pagination to tables (e.g. schedule log table) |  | 1.5h | 2010-02-11 17:00 A | 2010-02-11 18:30 A |  | 100% |  |  |  |  | Rob | 1.5h | 1.5h |  |
| 27 | 2.1.5 | Bug fixing and refactoring |  | 3h | 2010-02-15 14:00 A | 2010-02-17 15:00 A | 26 | 100% |  |  |  |  | Rob | 3h | 3h | 12 |
| 28 | 2.1.6 | Schedule duration validations |  | 4h | 2010-02-17 15:00 A | 2010-02-18 17:00 A | 27 | 100% |  |  |  |  | Rob | 4h | 4h | 16 |
| 29 | 2.1.7 | Search forms to schedule index and user index |  | 1.5h | 2010-02-18 17:00 A | 2010-02-18 18:30 A | 28 | 100% |  |  |  |  | Rob | 1.5h | 1.5h |  |
| 30 | 2.1.8 | Add calendars to the schedule index and form |  | 1.5h | 2010-02-22 14:00 A | 2010-02-22 15:30 A | 29 | 100% |  |  |  |  | Rob | 1.5h | 1.5h |  |
| 31 | 2.1.9 | Online help enhancements |  | 45min | 2010-02-22 15:30 A | 2010-02-22 16:15 A | 30 | 100% |  |  |  |  | Rob | 0.75h | 0.75h |  |

| ID | WBS | Task | Type | Duration | Start | Finish | Predecessors | Total slack | Free slack | Constraint | Resources | Work | Text1 |
| --- | --- | --- | --- | --- | --- | --- | --- | --- | --- | --- | --- | --- | --- |
| 32 | 2.2 | **Telescope-controlling application** |  | 0.25d | 2010-02-04 08:00 | 2010-02-04 15:30 |  | 9.25d | 7.12d |  |  | 1h | 16 |
| 33 | 2.2.1 | Add celestial object inputs into the application |  | 1h | 2010-02-04 14:30 | 2010-02-04 15:30 |  | 9.25d |  |  | Robert | 1h |  |
| 34 | 2.2.2 | Hardware interfacing completed | milestone | 0d | 2010-02-04 08:00 | 2010-02-04 08:00 | 13, 14, 54, 55 | 9.5d |  |  | Rob; Robert |  |  |
| 35 | 2.3 | **Documentation** |  | 6.38d | 2010-02-04 14:30 | 2010-02-24 16:30 |  | 3.12d | 1d |  |  | 47.5h | 16 |
| 36 | 2.3.1 | Update documentation |  | 16h | 2010-02-04 14:30 | 2010-02-17 15:30 | 19 | 5.5d |  |  | Rob; Robert | 32h | 64 |
| 37 | 2.3.2 | More metrics gathering |  | 2h | 2010-02-24 14:30 | 2010-02-24 16:30 | 18 | 3.12d |  | start no earlier than 2010-02-24 08:00 | Robert | 2h |  |
| 38 | 2.3.3 | Create unit tests for telescope-controlling application |  | 2.5h | 2010-02-15 14:00 | 2010-02-15 16:30 |  | 5.75d |  | start no earlier than 2010-02-15 08:00 | Robert | 2.5h | 10 |
| 39 | 2.3.4 | Create class diagram for telescope-controlling application |  | 1h | 2010-02-17 14:30 | 2010-02-17 15:30 |  | 3.75d | 0d | start no earlier than 2010-02-17 08:00 | Robert | 1h |  |
| 40 | 2.3.5 | Create sequence diagrams for telescope-controlling application |  | 2h | 2010-02-17 15:30 | 2010-02-18 15:30 | 39 | 3.75d | 0d |  | Robert | 2h |  |
| 41 | 2.3.6 | Create system-sequence diagrams |  | 2h | 2010-02-18 15:30 | 2010-02-18 17:30 | 40 | 3.75d | 0d |  | Robert | 2h |  |
| 42 | 2.3.7 | Create activity diagrams |  | 3h | 2010-02-18 17:30 | 2010-02-22 16:00 | 41 | 3.75d | 2.75d |  | Robert | 3h | 12 |
| 43 | 2.3.8 | Create state diagrams |  | 3h | 2010-02-04 14:30 | 2010-02-04 17:30 |  | 8.75d |  |  | Robert | 3h | 12 |
| 44 | 2.4 | Release #5: Libraries and GUI Enhancements | milestone | 0d | 2010-03-01 08:00 | 2010-03-01 08:00 | 22, 32, 35 | 2.12d | 1.12d | start no earlier than 2010-03-01 08:00 | Rob; Robert |  |  |
| 46 | 3 | **Iteration 7: Release #6: Automated Composite Image Compilation** |  | 4d | 2010-03-01 14:00 | 2010-03-11 17:30 | 21 | 0d |  |  |  | 38.25h | 16 |
| 47 | 3.1 | **Web system** |  | 4d | 2010-03-01 14:00 | 2010-03-11 17:30 |  | 0d |  |  |  | 16.75h | 16 |
| 48 | 3.1.1 | Add validations for celestial object/coordinates |  | 1.75h | 2010-03-03 14:30 | 2010-03-03 16:15 |  | 2.94d |  | start no earlier than 2010-03-03 08:00 | Rob | 1.75h |  |
| 49 | 3.1.2 | Add mobile device views and additional functionality |  | 4h | 2010-03-03 14:30 | 2010-03-04 16:30 |  | 2.38d |  | start no earlier than 2010-03-03 08:00 | Rob | 4h | 16 |
| 50 | 3.1.3 | Add image copying to batch file/job scheduling |  | 4h | 2010-03-01 14:00 | 2010-03-03 16:00 |  | 3d |  | start no earlier than 2010-02-04 08:00 | Rob | 4h | 16 |
| 51 | 3.1.4 | Install mail server |  | 2h | 2010-03-04 14:30 | 2010-03-04 16:30 | 44 | 1.12d |  | start no earlier than 2010-03-04 08:00 | Rob | 2h |  |
| 52 | 3.1.5 | Implement Oracle PL/SQL procedure to handle email notifications |  | 5h | 2010-03-10 14:30 | 2010-03-11 17:30 | 51 | 0d |  | start no earlier than 2010-03-10 08:00 | Rob | 5h | 20 |
| 53 | 3.2 | **Telescope-controlling application** |  | 1.88d | 2010-03-04 14:30 | 2010-03-10 15:30 |  | 1d |  |  |  | 10.5h | 16 |
| 54 | 3.2.1 | Create test program to handle image taking with specific parameters |  | 4.5h | 2010-02-10 14:30 | 2010-02-11 17:00 |  | 6.62d | 0d | start no earlier than 2010-02-10 08:00 | Robert | 4.5h | 18 |
| 55 | 3.2.2 | Integrate camera to telescope-controlling application |  | 0.5h | 2010-02-11 17:00 | 2010-02-11 17:30 | 54 | 6.62d | 0d |  | Robert | 0.5h |  |
| 56 | 3.2.3 | Implement functionality for compiling composite images |  | 4.5h | 2010-03-04 14:30 | 2010-03-08 14:30 | 55 | 1d | 0d | start no earlier than 2010-03-04 08:00 | Robert | 4.5h | 18 |
| 57 | 3.2.4 | Research image recognition options |  | 3h | 2010-03-08 14:30 | 2010-03-10 15:30 | 56 | 1d |  |  | Rob; Robert | 6h | 12 |

| ID | WBS | Task | Type | Duration | Start | Finish | Predecessors | Total slack | Free slack | Constraint | Resources | Work | Text1 |
| --- | --- | --- | --- | --- | --- | --- | --- | --- | --- | --- | --- | --- | --- |
| 58 | 3.3 | **Documentation** |  | 1.5d | 2010-03-04 14:30 | 2010-03-08 16:00 |  | 1.38d |  |  |  | 11h | 16 |
| 59 | 3.3.1 | Draft acceptance test |  | 1h | 2010-03-04 14:30 | 2010-03-04 15:30 | 42 | 2.62d | 1.25d | start no earlier than 2010-03-04 08:00 | Robert | 1h |  |
| 60 | 3.3.2 | Update documentation |  | 4h | 2010-03-04 14:30 | 2010-03-04 18:30 | 44 | 1.38d | 0d | start no earlier than 2010-03-04 08:00 | Rob; Robert | 8h | 16 |
| 61 | 3.3.3 | Create sequence diagrams for web application |  | 2h | 2010-03-08 14:00 | 2010-03-08 16:00 | 60 | 1.38d | 0d |  | Robert | 2h |  |
| 62 | 3.3.4 | All documentation created | milestone | 0d | 2010-03-08 16:00 | 2010-03-08 16:00 | 38, 39, 40, 41, 42, 43, 61, 59 | 1.38d |  |  | Rob; Robert |  |  |
| 63 | 3.4 | Release #6: Automated Composite Image Compilation | milestone | 0d | 2010-03-11 17:30 | 2010-03-11 17:30 | 47, 53, 58 | 0d |  | start no earlier than 2010-02-25 08:00 | Rob; Robert |  |  |
| 65 | 4 | **Iteration 8: Release #7: Image Recognition** |  | 3.25d | 2010-03-11 17:30 | 2010-03-24 15:30 | 46 | 0d |  |  |  | 30.5h | 16 |
| 66 | 4.1 | **Web system** |  | 1.75d | 2010-03-18 15:00 | 2010-03-24 15:30 |  | 0d |  |  |  | 7h | 16 |
| 67 | 4.1.1 | Implement manual telescope positioning |  | 7h | 2010-03-18 15:00 | 2010-03-24 15:30 | 73 | 0d |  |  | Rob | 7h | 28 |
| 68 | 4.2 | **Telescope-controlling application** |  | 2d | 2010-03-11 17:30 | 2010-03-18 17:00 |  | 0d |  |  |  | 15.5h | 16 |
| 69 | 4.2.1 | Implement functionality for image recognition |  | 6h | 2010-03-11 17:30 | 2010-03-18 15:00 | 63 | 1.25d | 0d |  | Robert | 6h | 24 |
| 70 | 4.2.2 | Integrate image recognition program with telescope-controlling application |  | 1.5h | 2010-03-18 15:00 | 2010-03-18 16:30 | 69 | 1.38d |  |  | Robert | 1.5h |  |
| 71 | 4.2.3 | Create scheduled email job which will email operators when new objects are found |  | 2h | 2010-03-18 15:00 | 2010-03-18 17:00 | 69 | 1.25d | 0d |  | Rob | 2h |  |
| 72 | 4.2.4 | Mail notification completed | milestone | 0d | 2010-03-18 17:00 | 2010-03-18 17:00 | 51, 52, 71 | 1.25d |  |  | Rob; Robert |  |  |
| 73 | 4.2.5 | Implement ability for streaming images live to the web system |  | 6h | 2010-03-11 17:30 | 2010-03-18 15:00 | 55 | 0d |  |  | Rob | 6h | 24 |
| 74 | 4.3 | **Documentation** |  | 1d | 2010-03-11 17:30 | 2010-03-17 15:00 |  | 2.25d |  |  |  | 8h | 16 |
| 75 | 4.3.1 | Update documentation |  | 4h | 2010-03-11 17:30 | 2010-03-17 15:00 | 63 | 2.25d |  |  | Rob; Robert | 8h | 16 |
| 76 | 4.4 | Release #7: Image Recognition | milestone | 0d | 2010-03-24 15:30 | 2010-03-24 15:30 | 66, 68, 74 | 0d |  |  | Rob; Robert |  |  |
| 78 | 5 | **Iteration 9: Release #8: Refactored Final Release** |  | 6.38d | 2010-03-24 15:30 | 2010-04-07 16:00 | 65 | 0d |  |  |  | 42h | 16 |
| 79 | 5.1 | Final refactoring |  | 5h | 2010-03-24 15:30 | 2010-03-25 18:30 | 76 | 0d |  |  | Rob; Robert | 10h | 20 |
| 80 | 5.2 | Changes to schedule log filtering for mobile device views |  | 1h | 2010-03-29 14:00 | 2010-03-29 15:00 | 79 | 0d |  | start no earlier than 2010-01-28 08:00 | Rob | 1h |  |
| 81 | 5.3 | **Deployment and End Testing** |  | 2.5d | 2010-03-29 15:00 | 2010-04-05 16:30 | 80 | 0d |  |  |  | 13h | 16 |
| 82 | 5.3.1 | Fix functional tests |  | 3h | 2010-03-29 15:00 | 2010-03-31 16:00 | 76 | 0d |  | start no earlier than 2010-01-07 08:00 | Rob | 3h | 12 |
| 83 | 5.3.2 | System testing |  | 2h | 2010-03-31 16:00 | 2010-04-01 16:00 | 82 | 0d |  |  | Rob; Robert | 4h |  |
| 84 | 5.3.3 | Integration testing |  | 3h | 2010-04-01 16:00 | 2010-04-05 14:30 | 83 | 0d |  |  | Robert | 3h | 12 |
| 85 | 5.3.4 | Final user acceptance test |  | 1h | 2010-04-05 14:30 | 2010-04-05 15:30 | 84 | 0d |  |  | Rob; Robert | 2h |  |
| 86 | 5.3.5 | Deploy systems to production environment |  | 1h | 2010-04-05 15:30 | 2010-04-05 16:30 | 85 | 0d |  |  | Rob | 1h |  |

| ID | WBS | Task | Type | Duration | Start | Finish | Predecessors | Total slack | Constraint | Resources | Work | Text1 |
| --- | --- | --- | --- | --- | --- | --- | --- | --- | --- | --- | --- | --- |
| 87 | 5.4 | **Documentation** |  | 1.75d | 2010-04-06 08:00 | 2010-04-06 16:00 | 81 | 0d |  |  | 13h | 16 |
| 88 | 5.4.1 | Finalize documentation |  | 6h | 2010-04-06 08:00 | 2010-04-06 15:00 | 76 | 0d |  | Rob; Robert | 12h | 24 |
| 89 | 5.4.2 | Compile final metrics and project statistics |  | 1h | 2010-04-06 15:00 | 2010-04-06 16:00 | 88 | 0d |  | Robert | 1h |  |
| 90 | 5.5 | **Final Presentation** |  | 0.62d | 2010-04-06 16:00 | 2010-04-07 16:00 | 87 | 0d |  |  | 5h | 16 |
| 91 | 5.5.1 | Create PowerPoint for final presentation |  | 2.5h | 2010-04-06 16:00 | 2010-04-07 16:00 | 76 | 0d |  | Rob; Robert | 5h | 10 |
| 92 | 5.5.2 | Present project to OC faculty and audience | milestone | 0d | 2010-04-07 16:00 | 2010-04-07 16:00 | 91 | 0d | start no earlier than 2010-04-07 08:00 | Rob; Robert |  |  |
| 93 | 5.6 | Final release | milestone | 0d | 2010-04-07 16:00 | 2010-04-07 16:00 | 90, 81, 87 | 0d | start no earlier than 2010-03-18 08:00 | Rob; Robert |  |  |
